# Maison d'éducation

Schedule from ProjectLibre, 2021-01-28 to 2021-04-20.

## Calendars

- Standard: Mon-Fri 08:00-12:00, 13:00-17:00; Sat-Sun off.

## Resources

| Resource | Rate |
| --- | --- |
| Non attribué |  |
| Chef de projet | 100 |
| Spécialiste système | 75 |
| Utilisateur averti |  |
| Analyste programmeur | 50 |

## Schedule

| ID | WBS | Task | Duration | Start | Finish | Predecessors | Complete | Baseline start | Baseline finish | Constraint | Resources |
| --- | --- | --- | --- | --- | --- | --- | --- | --- | --- | --- | --- |
| 1 | 1 | **Maison d'éducation** | 58.94d | 2021-01-28 | 2021-04-20 |  | 24% | 2021-01-28 | 2021-03-31 |  |  |
| 2 | 1.1 | Etude préalable | 2.5d | 2021-01-28 | 2021-02-01 |  | 100% | 2021-01-28 | 2021-02-01 |  | Chef de projet |
| 3 | 1.2 | **Sous-projet "placement"** | 33.12d | 2021-02-01 | 2021-03-18 |  | 48% | 2021-02-01 | 2021-03-08 |  |  |
| 4 | 1.2.1 | EP | 2.5d | 2021-02-01 | 2021-02-03 | 2 | 100% | 2021-02-01 | 2021-02-03 |  | Chef de projet |
| 5 | 1.2.2 | Conception ED "enfant" (ED) | 10d | 2021-02-04 | 2021-02-17 | 4 | 100% | 2021-02-04 | 2021-02-17 |  | Spécialiste système |
| 6 | 1.2.3 | 1-Fichier "enfant" (prog) | 1d | 2021-02-18 | 2021-02-18 | 5 | 100% | 1970-01-01 | 1970-01-01 | start no earlier than 2021-02-18 | Analyste programmeur |
| 7 | 1.2.4 | 2-Fichier "enfant" (prog) | 2.5d | 2021-02-26 | 2021-03-02 | 6 |  | 2021-02-18 | 2021-02-22 | start no earlier than 2021-02-26 | Analyste programmeur [80%] |
| 8 | 1.2.5 | Affectation enfants-familles (prog) | 6.25d | 2021-03-02 | 2021-03-10 | 7 |  | 2021-02-23 | 2021-03-01 | start no earlier than 2021-02-23 | Analyste programmeur [80%] |
| 9 | 1.2.6 | MAJ BD (départ enfants) (prog) | 3.75d | 2021-03-11 | 2021-03-16 | 7 |  | 2021-03-02 | 2021-03-04 | start no earlier than 2021-03-11 | Analyste programmeur [80%] |
| 10 | 1.2.7 | Test placement | 1.88d | 2021-03-16 | 2021-03-18 | 7, 8, 9 |  | 2021-03-05 | 2021-03-08 |  | Utilisateur averti [80%] |
| 11 | 1.3 | **Sous-projet "suivi"** | 41.94d | 2021-02-01 | 2021-03-31 |  | 42% | 2021-02-01 | 2021-03-15 |  |  |
| 12 | 1.3.1 | Gestion d'historique "enfant" (ED et prog) | 3.44d | 2021-03-26 | 2021-03-31 | 2 |  | 2021-03-11 | 2021-03-15 | start no earlier than 2021-03-26 | Analyste programmeur [80%]; Spécialiste système [80%] |
| 13 | 1.3.2 | Planning des visites (ED et prog) | 2.5d | 2021-02-01 | 2021-02-03 | 2 | 100% | 2021-02-01 | 2021-02-03 | start no earlier than 2021-02-01 | Analyste programmeur; Spécialiste système |
| 14 | 1.4 | **Sous-projet "familles d'accueil"** | 41.38d | 2021-02-04 | 2021-04-02 |  | 13% | 2021-02-04 | 2021-03-22 |  |  |
| 15 | 1.4.1 | EP | 2.5d | 2021-02-04 | 2021-02-08 | 2 | 100% | 2021-02-04 | 2021-02-08 | start no earlier than 2021-02-04 | Chef de projet |
| 16 | 1.4.2 | 1-Conception BD "famille" (ED) | 1d | 2021-02-18 | 2021-02-18 | 15 | 100% | 1970-01-01 | 1970-01-01 | start no earlier than 2021-02-18 | Spécialiste système |
| 17 | 1.4.3 | 2-Conception BD "famille" (ED) | 11.25d | 2021-02-26 | 2021-03-15 | 16 |  | 2021-02-18 | 2021-03-03 | start no earlier than 2021-02-26 | Spécialiste système [80%] |
| 18 | 1.4.4 | Fichier "famille" (prog) | 6d | 2021-03-15 | 2021-03-23 | 17 |  | 2021-03-04 | 2021-03-11 | start no earlier than 2021-03-02 | Chef de projet |
| 19 | 1.4.5 | MAJ BD recrutement, renouvellement (prog) | 5d | 2021-03-25 | 2021-03-31 | 17 |  | 2021-03-12 | 2021-03-18 | start no earlier than 2021-03-25 | Chef de projet |
| 20 | 1.4.6 | Test famille | 1.88d | 2021-04-01 | 2021-04-02 | 18, 19 |  | 2021-03-19 | 2021-03-22 | start no earlier than 2021-03-19 | Utilisateur averti [80%] |
| 21 | 1.5 | **Sous-projet "allocation"** | 20.25d | 2021-03-17 | 2021-04-14 |  |  | 2021-03-04 | 2021-03-25 | start no earlier than 2021-03-04 |  |
| 22 | 1.5.1 | Conception BD compta (ED) | 6.25d | 2021-03-17 | 2021-03-25 | 2 |  | 2021-03-04 | 2021-03-10 | start no earlier than 2021-03-17 | Spécialiste système [80%] |
| 23 | 1.5.2 | Procédure de versement (prog) | 3.75d | 2021-04-01 | 2021-04-06 | 22 |  | 2021-03-16 | 2021-03-18 | start no earlier than 2021-04-01 | Analyste programmeur [80%] |
| 24 | 1.5.3 | Procédures arrêt (prog) | 3.12d | 2021-04-07 | 2021-04-12 | 22 |  | 2021-03-19 | 2021-03-23 | start no earlier than 2021-04-07 | Analyste programmeur [80%] |
| 25 | 1.5.4 | Test allocations | 1.88d | 2021-04-12 | 2021-04-14 | 23, 24 |  | 2021-03-23 | 2021-03-25 | start no earlier than 2021-03-23 | Utilisateur averti [80%] |
| 26 | 1.6 | Intégration | 4.69d | 2021-04-14 | 2021-04-20 | 10, 12, 13, 20, 25 |  | 2021-03-25 | 2021-03-31 | start no earlier than 2021-04-01 | Analyste programmeur [80%]; Chef de projet; Spécialiste système [80%]; Utilisateur averti [80%] |
